Schedule from MS Project, 2010-09-01 to 2011-03-29, A marks actual dates.

## Calendars

- Standard: Mon-Fri 08:00-12:00, 13:00-17:00; Sat-Sun off.

## Resources

| Resource |
| --- |
| Andrew Bolster |

## Schedule

| ID | WBS | Task | Type | Duration | Start | Finish | Predecessors | Complete | Remaining | Actual start | Total slack | Free slack | Constraint | Resources | Work | Actual work |
| --- | --- | --- | --- | --- | --- | --- | --- | --- | --- | --- | --- | --- | --- | --- | --- | --- |
| 1 | 1 | **Research** |  | 33d | 2010-09-01 A | 2010-10-17 |  | 94% | 2.03d |  | 0d |  |  | Andrew Bolster | 720h | 675.79h |
| 2 | 1.1 | CUDA technologies and development strategy | manual | 15d | 2010-09-01 A | 2010-09-21 A |  | 100% |  |  |  |  |  | Andrew Bolster | 120h | 120h |
| 3 | 1.2 | DSL DSM Technologies | manual | 28d | 2010-09-09 A | 2010-10-17 A |  | 100% |  |  |  |  |  | Andrew Bolster | 224h | 224h |
| 4 | 1.3 | Scientific Computing with Python | manual | 7d | 2010-09-13 A | 2010-09-21 A |  | 100% |  |  |  |  |  | Andrew Bolster | 56h | 56h |
| 5 | 1.4 | Genetic Programming with Python | manual | 7d | 2010-09-14 A | 2010-09-22 |  | 50% | 3.5d |  |  |  |  | Andrew Bolster | 56h | 28h |
| 6 | 2 | **Initialisation** |  | 16d | 2010-09-16 A | 2010-10-07 A |  | 100% |  |  |  |  |  | Andrew Bolster | 232h | 232h |
| 7 | 2.1 | Define Project Specification | manual | 1d | 2010-09-16 A | 2010-09-16 A |  | 100% |  |  |  |  | start no earlier than 2010-09-16 | Andrew Bolster | 8h | 8h |
| 8 | 2.2 | Define Document Management System | manual | 5d | 2010-09-16 A | 2010-09-22 A |  | 100% |  |  |  |  |  | Andrew Bolster | 40h | 40h |
| 9 | 2.3 | Define Source / Issue Management System | manual | 7d | 2010-09-29 A | 2010-10-07 A |  | 100% |  |  |  |  | start no earlier than 2010-09-29 | Andrew Bolster | 56h | 56h |
| 10 | 3 | **Framework Design** |  | 46d? | 2010-10-11 A | 2010-12-13 |  | 92% | 3.83d? |  | 43.5d | 35d |  | Andrew Bolster | 872h | 799.33h |
| 11 | 3.1 | Develop and Implement channel model framework |  | 21d | 2010-10-11 A | 2010-11-08 A |  | 100% |  |  |  |  |  | Andrew Bolster | 168h | 168h |
| 12 | 3.2 | Develop in-framework implementations of current level 1 and level 2 DSM algorithms for later performance evaluation |  | 21d? | 2010-11-04 A | 2010-12-02 A | 11FS-3d | 100% |  |  |  |  |  | Andrew Bolster | 168h | 168h |
| 13 | 3.3 | New Framework gives same answers as old | milestone | 0d? | 2010-12-02 A | 2010-12-02 A | 12 | 100% |  |  |  |  |  | Andrew Bolster |  |  |
| 14 | 3.4 | Specify Algorithm API wrt to framework |  | 7d | 2010-12-03 A | 2010-12-13 | 13 | 25% | 5.25d |  | 43.5d |  |  | Andrew Bolster | 56h | 14h |
| 15 | 3.5 | Specify benchmarking schema for algorithm comparison |  | 14d? | 2010-11-12 A | 2010-12-01 A | 12SS+6d | 100% |  |  |  |  |  | Andrew Bolster | 112h | 112h |
| 16 | 4 | **Implementation** |  | 30d? | 2011-02-01 | 2011-03-14 | 10 | 13% | 26.25d? | 2011-02-08 | 0d |  |  | Andrew Bolster | 928h | 76h |
| 17 | 4.1 | **Develop in-framework implementation of 'novel algorithm' and benchmark** |  | 30d | 2011-02-01 | 2011-03-14 |  | 13% | 26.25d | 2011-02-08 |  |  |  | Andrew Bolster | 464h | 28h |
| 18 | 4.1.1 | Generate basic algorithm |  | 7d? | 2011-02-08 A | 2011-02-16 |  | 50% | 3.5d? |  | 0d |  | start no earlier than 2011-02-08 | Andrew Bolster | 56h | 28h |
| 19 | 4.1.2 | Expand implementation to GPU |  | 7d | 2011-02-17 | 2011-02-25 | 18 |  |  |  | 0d |  |  | Andrew Bolster | 56h |  |
| 20 | 4.1.3 | Profile and optimise iteratively with benchmarking |  | 14d? | 2011-02-23 | 2011-03-14 | 19FS-3d |  |  |  | 0d |  |  | Andrew Bolster | 112h |  |
| 21 | 4.2 | **Develop in-framework implementation of GA and benchmark** |  | 14d? | 2011-02-17 A | 2011-03-08 | 18 | 13% | 12.25d? |  | 4d |  |  | Andrew Bolster | 224h | 28h |
| 22 | 4.2.1 | Generate basic algorithm |  | 7d? | 2011-02-17 A | 2011-02-25 |  | 25% | 5.25d? |  | 4d | 0d |  | Andrew Bolster | 56h | 14h |
| 23 | 4.2.2 | Profile and optimise iteratively with benchmarking |  | 7d? | 2011-02-28 | 2011-03-08 | 22 |  |  |  | 4d |  |  | Andrew Bolster | 56h |  |
| 24 | 5 | **Comparison** |  | 14d | 2011-03-10 | 2011-03-29 | 16FS-3d |  |  |  | 0d |  |  | Andrew Bolster | 256h |  |
| 25 | 5.1 | Analysis of implementations wrt speed, practicality and optimality |  | 6d | 2011-03-10 | 2011-03-17 |  |  |  |  | 0d |  |  | Andrew Bolster | 48h |  |
| 26 | 5.2 | Quantify improvement of new implementations |  | 6d | 2011-03-16 | 2011-03-23 | 25FS-2d |  |  |  | 0d |  |  | Andrew Bolster | 48h |  |
| 27 | 5.3 | Compare and contrast structural changes |  | 6d | 2011-03-22 | 2011-03-29 | 26FS-2d |  |  |  | 0d |  |  | Andrew Bolster | 48h |  |

| ID | WBS | Task | Type | Duration | Start | Finish | Predecessors | Complete | Remaining | Actual start | Total slack | Free slack | Constraint | Resources | Work | Actual work |
| --- | --- | --- | --- | --- | --- | --- | --- | --- | --- | --- | --- | --- | --- | --- | --- | --- |
| 28 | 6 | **Reporting** |  | 106d? | 2010-10-11 | 2011-03-07 |  | 51% | 51.82d? | 2010-10-19 |  |  |  | Andrew Bolster | 3648h | 1400h |
| 29 | 6.1 | Interim Report |  | 7d | 2011-02-03 A | 2011-02-11 A |  | 100% |  |  |  |  | finish no earlier than 2011-02-11 |  |  |  |
| 30 | 6.2 | Interim Report Submission | milestone, manual | 1d? | 2011-02-11 A | 2011-02-11 A |  | 100% |  |  |  |  |  |  |  |  |
| 31 | 6.3 | Introduction |  | 21d | 2010-12-06 A | 2011-01-03 A | 7 | 100% |  |  |  |  | start no earlier than 2010-12-06 | Andrew Bolster | 168h | 168h |
| 32 | 6.4 | Theory & Background |  | 28d | 2010-12-15 A | 2011-01-21 A | 31FS-14d, 1FF | 100% |  |  |  |  |  | Andrew Bolster | 224h | 224h |
| 33 | 6.5 | Software Documentation & Reviews |  | 28d | 2011-01-04 A | 2011-02-10 | 32FS-14d, 6FF | 75% | 7d |  | 17d | 0d |  | Andrew Bolster | 224h | 168h |
| 34 | 6.6 | Hardware |  | 21d | 2011-01-24 A | 2011-02-21 | 33FS-14d | 75% | 5.25d |  | 10d | 0d |  | Andrew Bolster | 168h | 126h |
| 35 | 6.7 | Software Environment Features |  | 21d | 2011-02-02 A | 2011-03-02 | 34FS-14d | 50% | 10.5d |  | 3d |  |  | Andrew Bolster | 168h | 84h |
| 36 | 6.8 | Design Decisions/Design Diary |  | 105d | 2010-10-19 A | 2011-03-14 | 16FF | 50% | 52.5d |  | -5d | 0d |  | Andrew Bolster | 840h | 420h |
| 37 | 6.9 | Design Heuristics used |  | 105d | 2010-10-19 A | 2011-03-14 | 36FF | 25% | 78.75d |  | -12d | 0d |  | Andrew Bolster | 840h | 210h |
| 38 | 6.10 | End-system interface details |  | 21d | 2011-02-23 | 2011-03-23 | 37FF+7d |  |  |  | -12d | 0d |  | Andrew Bolster | 168h |  |
